# Digital Dash Project Schedule

How a schedule from MS Project changed from version to version. A marks actual dates.

## Version 1 (saved 2015-02-20)

Note of the change: Commit 100!

| ID | WBS | Task | Duration | Start | Finish | Predecessors | Complete | Total float | Constraint |
| --- | --- | --- | --- | --- | --- | --- | --- | --- | --- |
| 1 |  | Project Introduction | 1.5d | 2014-11-21 A | 2014-11-24 A |  | 100% |  |  |
| 2 |  | Create Project Wiki | 1d | 2014-11-21 A | 2014-11-21 A |  | 100% |  |  |
| 3 | 3 | **Project Research** | 31d | 2014-11-21 A | 2015-01-02 |  | 99% | 0d |  |
| 4 |  | Microprocessor | 25d | 2014-11-21 A | 2014-12-25 A |  | 100% |  |  |
| 5 |  | LCD Screens | 25d | 2014-11-21 A | 2014-12-25 A |  | 100% |  |  |
| 6 |  | CAN | 25d | 2014-11-21 A | 2014-12-25 A |  | 100% |  |  |
| 7 |  | LCD Screen Orientation | 6d | 2014-12-28 A | 2015-01-02 A |  | 100% |  |  |
| 8 |  | GUI Layout | 6d | 2014-12-28 A | 2015-01-02 A |  | 100% |  |  |
| 9 |  | Enclosure | 6d | 2014-12-28 A | 2015-01-02 A |  | 100% |  |  |
| 10 |  | Cost/Budget | 6d | 2014-12-28 A | 2015-01-02 A |  | 100% |  |  |
| 11 | 4 | **Project Proposal** | 42d | 2015-01-03 A | 2015-02-13 A | 3 | 100% |  |  |
| 12 |  | Presentation Draft | 1d | 2015-01-03 A | 2015-01-03 A |  | 100% |  | start no earlier than 2015-01-03 |
| 13 |  | Review Presentation | 7d | 2015-01-04 A | 2015-01-10 A | 12 | 100% |  | start no earlier than 2015-01-04 |
| 14 |  | Revise & Finalize Presentation | 6d | 2015-01-13 A | 2015-01-18 A | 13 | 100% |  |  |
| 15 |  | Present to Sponsers | 1d | 2015-01-21 A | 2015-01-21 A | 14 | 100% |  |  |
| 16 |  | Documentation 1st Draft | 5d | 2015-01-23 A | 2015-01-27 A |  | 100% |  |  |
| 17 |  | Document Revision | 5d | 2015-01-28 A | 2015-02-01 A |  | 100% |  |  |
| 18 |  | Documentation Final | 12d | 2015-02-02 A | 2015-02-13 A |  | 100% |  |  |
| 19 | 5 | **Parts Order** | 8d | 2015-01-23 A | 2015-01-30 | 15 | 71% | 0d |  |
| 20 |  | Create BOM | 4d | 2015-01-23 A | 2015-01-26 A |  | 100% |  |  |
| 21 |  | Revise & Review BOM | 1d | 2015-01-29 A | 2015-01-29 | 20 | 35% |  |  |
| 22 |  | Finalize BOM | 1d | 2015-01-30 | 2015-01-30 | 21 |  |  |  |
| 23 |  | Inquire Sample Parts | 7d | 2015-01-23 A | 2015-01-29 A |  | 100% |  |  |
| 24 |  | Order Parts | 7d | 2015-01-23 A | 2015-01-29 |  | 40% |  |  |
| 25 | 6 | **Software Design** | 22d | 2015-01-24 A | 2015-02-14 |  | 53% | 0d |  |
| 26 |  | Develop Algorithms | 2d | 2015-01-24 A | 2015-01-25 A |  | 100% |  |  |
| 27 |  | Write Pseudocode | 4d | 2015-01-26 A | 2015-01-29 A | 26 | 100% |  |  |
| 28 |  | Test Code | 2d | 2015-02-13 A | 2015-02-14 A | 27 | 100% |  |  |
| 29 |  | Debug Code | 4d | 2015-01-31 A | 2015-02-03 | 28 | 25% |  |  |
| 30 |  | Verify Code | 3d | 2015-02-04 | 2015-02-06 | 29 |  |  |  |
| 31 |  | Intergrate Code | 2d | 2015-02-06 | 2015-02-07 | 30 |  |  |  |
| 32 | 7 | **Prototype Hardware** | 13d | 2015-01-24 A | 2015-02-05 |  | 77% | 0d |  |
| 33 |  | Schematic Design | 5d | 2015-01-24 A | 2015-01-28 A |  | 100% |  |  |
| 34 |  | Build Prototype | 4d | 2015-01-29 A | 2015-02-01 A | 33 | 100% |  |  |
| 35 |  | Debug/Verify | 4d | 2015-02-02 A | 2015-02-05 | 34 | 25% |  |  |
| 36 | 8 | **Prototype Enclosure** | 8d | 2015-02-28 | 2015-03-07 | 54 |  | 0d |  |
| 37 |  | Design | 2d | 2015-02-28 | 2015-03-01 | 54 |  |  |  |
| 38 |  | Build Prototype | 2d | 2015-03-02 | 2015-03-03 | 37 |  |  |  |
| 39 |  | Test Enclosure | 3d | 2015-03-04 | 2015-03-06 | 38 |  |  |  |
| 40 |  | Finalize | 1d | 2015-03-07 | 2015-03-07 | 39 |  |  |  |
| 41 | 9 | **Prototype Design Implementation** | 5d | 2015-03-08 | 2015-03-12 | 39 |  | 0d |  |
| 42 |  | Intergrate Full System | 1d | 2015-03-08 | 2015-03-08 | 31, 35, 54, 40 |  |  |  |
| 43 |  | Test Full System | 1d | 2015-03-09 | 2015-03-09 | 42 |  |  |  |
| 44 |  | Validate | 1d | 2015-03-10 | 2015-03-10 | 43 |  |  |  |
| 45 |  | Debug/Verify | 2d | 2015-03-11 | 2015-03-12 | 44 |  |  |  |
| 46 | 10 | **PCB Layout** | 15d | 2015-04-01 A | 2015-04-15 | 34 | 14% | 0d |  |
| 47 |  | Design First Layout | 3d | 2015-04-01 A | 2015-04-03 | 34 | 70% |  |  |
| 48 |  | Review Design | 2d | 2015-04-04 | 2015-04-05 | 47 |  |  |  |
| 49 |  | Board Improvements | 2d | 2015-04-06 | 2015-04-07 | 48 |  |  |  |
| 50 |  | Finalize Board | 1d | 2015-04-08 | 2015-04-08 | 49 |  |  |  |
| 51 |  | Order PCB Board | 7d | 2015-04-09 | 2015-04-15 | 50 |  |  |  |
| 52 | 11 | **Final Hardware Build** | 6d | 2015-04-16 | 2015-04-21 | 51 |  | 0d |  |
| 53 |  | Solder Board | 4d | 2015-04-16 | 2015-04-19 | 51 |  |  |  |
| 54 |  | Debug/Verify | 2d | 2015-04-20 | 2015-04-21 | 53 |  |  |  |
| 55 | 12 | **Final Encloure** | 6d | 2015-04-21 | 2015-04-26 | 54 |  | 0d |  |
| 56 |  | Design | 5d | 2015-04-21 | 2015-04-25 | 54 |  |  |  |
| 57 |  | Build Prototype | 5d | 2015-04-22 | 2015-04-26 | 56 |  |  |  |
| 58 |  | Test Enclosure | 3d | 2015-04-23 | 2015-04-25 | 57 |  |  |  |
| 59 |  | Finalize | 2d | 2015-04-24 | 2015-04-25 | 58 |  |  |  |
| 60 | 13 | **Operation Manuals** | 113d | 2015-02-07 | 2015-05-30 | 30, 35 |  | 0d |  |
| 61 |  | Create First Draft | 10d | 2015-02-07 | 2015-02-16 | 30 |  |  |  |
| 62 |  | Add Software Documentation | 20d | 2015-02-17 | 2015-03-08 | 61 |  |  |  |
| 63 |  | Add Hardware Documentation | 20d | 2015-02-17 | 2015-03-08 | 61 |  |  |  |
| 64 |  | Add Enclosure Documentation | 20d | 2015-02-17 | 2015-03-08 | 61 |  |  |  |
| 65 |  | Review and Revise | 10d | 2015-03-09 | 2015-03-18 | 64 |  |  |  |
| 66 |  | Finalize | 5d | 2015-05-26 | 2015-05-30 | 65 |  |  |  |
| 67 | 14 | **Poster Presentation** | 12d | 2015-05-25 | 2015-06-05 |  |  |  |  |
| 68 |  | Create First Draft | 5d | 2015-05-25 | 2015-05-29 |  |  |  |  |
| 69 |  | Review and Revise | 5d | 2015-05-30 | 2015-06-03 |  |  |  |  |
| 70 |  | Final Draft | 1d | 2015-06-04 | 2015-06-04 |  |  |  |  |

| ID | Task | Duration | Start | Finish |
| --- | --- | --- | --- | --- |
| 71 | Presentation | 1d | 2015-06-05 | 2015-06-05 |

## Version 2 (saved 2015-03-03)

Note of the change: Merge branch 'master' of https://github.com/noahterickson/DigitalDash

Last finish stays 2015-06-05. Complete tasks 23 → 25.

Changed:

| ID | Task | Start | Finish | Complete | Total float |
| --- | --- | --- | --- | --- | --- |
| 25 | **Software Design** |  |  | 53% → 84% |  |
| 29 | Debug Code |  | 2015-02-03 A | 25% → 100% |  |
| 30 | Verify Code | 2015-02-04 A |  | 0% → 75% |  |
| 32 | **Prototype Hardware** |  | 2015-02-05 A | 77% → 100% | 0d → none |
| 35 | Debug/Verify |  | 2015-02-05 A | 25% → 100% |  |

## Version 3 (saved 2015-03-16)

Note of the change: Update Schedule

Last finish stays 2015-06-05. Complete tasks 25 → 27.

Changed:

| ID | Task | Start | Finish | Complete | Other |
| --- | --- | --- | --- | --- | --- |
| 19 | **Parts Order** |  |  | 71% → 73% |  |
| 21 | Revise & Review BOM |  |  | 35% → 80% |  |
| 24 | Order Parts |  |  |  | resources Chad → Chad; Noah |
| 37 | Design |  |  |  | resources Jaime → Rishal |
| 38 | Build Prototype |  |  |  | resources Jaime → Jaime; Rishal |
| 46 | **PCB Layout** |  |  | 14% → 27% |  |
| 47 | Design First Layout |  | 2015-04-03 A | 70% → 100% | resources Rishal → Rishal; Jaime |
| 48 | Review Design | 2015-04-04 A |  | 0% → 50% |  |
| 60 | **Operation Manuals** | 2015-02-07 A |  | 0% → 12% |  |
| 61 | Create First Draft | 2015-02-07 A | 2015-02-16 A | 0% → 100% |  |

## Version 4 (saved 2015-05-19)

Note of the change: Merge branch 'master' of https://github.com/noahterickson/DigitalDash

Last finish stays 2015-06-05. Complete tasks 27 → 44.

Added:

| ID | Task | Duration | Start | Finish | Resources |
| --- | --- | --- | --- | --- | --- |
| 31 | Demo Code | 1d | 2015-04-10 A | 2015-04-10 A | Sean |

Changed:

| ID | Task | Start | Finish | Duration | Complete | Total float | Other |
| --- | --- | --- | --- | --- | --- | --- | --- |
| 19 | **Parts Order** |  | 2015-01-30 A |  | 73% → 100% | 0d → none |  |
| 21 | Revise & Review BOM |  | 2015-01-29 A |  | 80% → 100% |  |  |
| 22 | Finalize BOM | 2015-01-30 A | 2015-01-30 A |  | 0% → 100% |  |  |
| 24 | Order Parts |  | 2015-01-29 A |  | 40% → 100% |  |  |
| 25 | **Software Design** |  | 2015-02-14 → 2015-04-10 (+55d) | 22d → 77d | 84% → 99% |  |  |
| 30 | Verify Code |  | 2015-02-06 A |  | 75% → 100% |  |  |
| 32 | Intergrate Code | 2015-02-06 A |  |  | 0% → 90% |  |  |
| 37 | **Prototype Enclosure** | 2015-02-28 A | 2015-03-07 A |  | 0% → 100% | 0d → none |  |
| 38 | Design | 2015-02-28 A | 2015-03-01 A |  | 0% → 100% |  |  |
| 39 | Build Prototype | 2015-03-02 A | 2015-03-03 A |  | 0% → 100% |  |  |
| 40 | Test Enclosure | 2015-03-04 A | 2015-03-06 A |  | 0% → 100% |  |  |
| 41 | Finalize | 2015-03-07 A | 2015-03-07 A |  | 0% → 100% |  |  |
| 42 | **Prototype Design Implementation** | 2015-03-08 A |  |  | 0% → 15% |  |  |
| 43 | Intergrate Full System | 2015-03-08 A |  |  | 0% → 75% |  |  |
| 47 | **PCB Layout** |  | 2015-04-15 A |  | 27% → 100% | 0d → none |  |
| 49 | Review Design |  | 2015-04-05 A |  | 50% → 100% |  |  |
| 50 | Board Improvements | 2015-04-06 A | 2015-04-07 A |  | 0% → 100% |  |  |
| 51 | Finalize Board | 2015-04-08 A | 2015-04-08 A |  | 0% → 100% |  |  |
| 52 | Order PCB Board | 2015-04-09 A | 2015-04-15 A |  | 0% → 100% |  |  |
| 53 | **Final Hardware Build** | 2015-04-16 A | 2015-04-21 A |  | 0% → 100% | 0d → none |  |
| 54 | Solder Board | 2015-04-16 A | 2015-04-19 A |  | 0% → 100% |  |  |
| 55 | Debug/Verify | 2015-04-20 A | 2015-04-21 A |  | 0% → 100% |  |  |
| 56 | **Final Encloure** | 2015-04-21 A |  |  | 0% → 33% |  |  |
| 57 | Design | 2015-04-21 A | 2015-04-25 A |  | 0% → 100% |  | resources Jaime → Digital Dash Team |
| 61 | **Operation Manuals** |  |  |  | 12% → 53% |  |  |
| 63 | Add Software Documentation | 2015-02-17 A |  |  | 0% → 75% |  |  |
| 64 | Add Hardware Documentation | 2015-02-17 A |  |  | 0% → 75% |  |  |
| 65 | Add Enclosure Documentation | 2015-02-17 A |  |  | 0% → 25% |  |  |
| 68 | **Poster Presentation** | 2015-05-25 A |  |  | 0% → 52% |  |  |
| 69 | Create First Draft | 2015-05-25 A | 2015-05-29 A |  | 0% → 100% |  |  |
| 70 | Review and Revise | 2015-05-30 A |  |  | 0% → 25% |  |  |
